# 1200V,140mΩ

Schedule from a web Gantt chart, 2024-07-16 to 2026-10-30.
Every day is a working day

## Schedule

| ID | WBS | Task | Duration | Start | Finish | Predecessors | Complete | Status |
| --- | --- | --- | --- | --- | --- | --- | --- | --- |
| 2 | 1 | Kick off | 6d | 2024-07-16 | 2024-07-21 |  | 100% | done |
| 3 | 2 | Design & Layout | 17d | 2024-07-22 | 2024-08-07 |  | 100% | done |
| 4 | 3 | FT 调试 | 315d | 2024-10-09 | 2025-08-19 |  | 100% | done |
| 5 | 4 | **Pre-Qual** | 52d | 2025-08-20 | 2025-10-10 |  | 100% |  |
| 6 | 4.1 | RE168H | 9d | 2025-08-20 | 2025-08-28 |  | 100% | done |
| 7 | 4.2 | RE504H | 20d | 2025-08-28 | 2025-09-16 |  | 100% | done |
| 8 | 4.3 | RE1008H | 25d | 2025-09-16 | 2025-10-10 |  | 100% | done |
| 9 | 5 | RSA | 428d | 2025-08-29 | 2026-10-30 | 6 | 28% |  |
| 10 | 6 | **Formal Qual** | 237d | 2025-07-25 | 2026-03-18 |  |  |  |
| 11 | 6.1 | **1st qual lot** | 36d | 2025-10-20 | 2025-11-24 |  |  |  |
| 12 | 6.1.1 | Fab Process & F/O | 36d | 2025-10-20 | 2025-11-24 |  |  |  |
| 13 | 6.2 | F/O(CP&Map review) | 5d | 2025-07-25 | 2025-07-29 |  |  |  |
| 14 | 6.3 | PKG & FT | 45d | 2025-07-25 | 2025-09-07 |  |  |  |
| 15 | 6.4 | **RE验证** | 62d | 2026-01-16 | 2026-03-18 |  |  |  |
| 16 | 6.4.1 | RE168H | 12d | 2026-01-16 | 2026-01-27 |  |  | waiting |
| 17 | 6.4.2 | RE504H | 17d | 2026-01-28 | 2026-02-13 |  |  | waiting |
| 18 | 6.4.3 | RE1008H | 33d | 2026-02-14 | 2026-03-18 |  |  | waiting |
| 19 | 7 | **Datasheet** | 55d | 2026-01-28 | 2026-03-23 |  |  |  |
| 20 | 7.1 | DS V0.5 | 14d | 2026-01-28 | 2026-02-10 | 16 |  | waiting |
| 21 | 7.2 | DS V1.0 | 5d | 2026-03-19 | 2026-03-23 | 18 |  | waiting |
| 22 | 8 | AE验证 | 1d | 2024-07-16 | 2024-07-16 |  |  |  |
| 23 | 9 | RTP | 1d | 2024-07-16 | 2024-07-16 |  |  |  |
