# 星火G3.5 1A

Schedule from a web Gantt chart, 2025-08-08 to 2026-03-24.
Every day is a working day

## Schedule

| ID | WBS | Task | Duration | Start | Finish | Predecessors | Complete | Status |
| --- | --- | --- | --- | --- | --- | --- | --- | --- |
| 2 | 1 | **1st device lot** | 154d | 2025-08-08 | 2026-01-08 |  | 48% |  |
| 3 | 1.1 | Layout ready | 4d | 2025-08-08 | 2025-08-11 |  | 100% | done |
| 4 | 1.2 | Mask in & W/S | 28d | 2025-08-12 | 2025-09-08 | 3 | 100% | done |
| 5 | 1.3 | 1st device lot F/O & CP | 20d | 2025-09-09 | 2025-09-28 | 4 | 100% | done |
| 6 | 1.4 | **盲封 验证动态性能&RE (动态已fail)** | 102d | 2025-09-29 | 2026-01-08 |  | 29% |  |
| 7 | 1.4.1 | Assembly | 25d | 2025-09-29 | 2025-10-23 | 5 | 100% | done |
| 8 | 1.4.2 | Package ready | 2d | 2025-10-24 | 2025-10-25 | 7 | 100% | done |
| 9 | 1.4.3 | CRE 动态验证 | 6d | 2025-10-26 | 2025-10-31 | 8 | 100% | done |
| 10 | 1.4.4 | **RE 验证** | 60d | 2025-11-10 | 2026-01-08 |  |  |  |
| 11 | 1.4.4.1 | RE 168H & Samples ready | 15d | 2025-11-10 | 2025-11-24 |  |  |  |
| 12 | 1.4.4.2 | RE 1008H | 60d | 2025-11-10 | 2026-01-08 |  |  |  |
| 13 | 1.4.5 | Bench test | 5d | 2025-11-10 | 2025-11-14 |  |  |  |
| 14 | 1.5 | **验证Vth & CP/system Idsat** | 69d | 2025-10-17 | 2025-12-24 |  | 37% |  |
| 15 | 1.5.1 | wafer寄出 | 1d | 2025-10-17 | 2025-10-17 |  | 100% | done |
| 16 | 1.5.2 | Assemby | 29d | 2025-10-18 | 2025-11-15 | 15 | 74% |  |
| 17 | 1.5.3 | 蓝膜样品准备 | 30d | 2025-11-25 | 2025-12-24 | 11 |  | waiting |
| 18 | 2 | **2nd 改版 device lot(AA mask / pGaN +OHO)** | 144d | 2025-11-01 | 2026-03-24 |  |  |  |
| 19 | 2.1 | **Fab Process** | 42d | 2025-11-01 | 2025-12-12 |  |  | waiting |
| 20 | 2.1.1 | Mask ready | 14d | 2025-11-01 | 2025-11-14 |  |  | waiting |
| 21 | 2.1.2 | Wafer Process | 28d | 2025-11-15 | 2025-12-12 | 20 |  | waiting |
| 22 | 2.2 | WLRE | 10d | 2025-12-13 | 2025-12-22 | 19 |  | waiting |
| 23 | 2.3 | Assembly | 22d | 2025-12-13 | 2026-01-03 | 19 |  | waiting |
| 24 | 2.4 | **Pre-qual (1lot) 可靠性验证** | 80d | 2026-01-04 | 2026-03-24 | 23 |  | waiting |
| 25 | 2.4.1 | RE 168H | 16d | 2026-01-04 | 2026-01-19 |  |  | waiting |
| 26 | 2.4.2 | RE 500H | 35d | 2026-01-04 | 2026-02-07 |  |  | waiting |
| 27 | 2.4.3 | RE 1008H | 80d | 2026-01-04 | 2026-03-24 |  |  | waiting |

| ID | WBS | Task | Duration | Start | Finish |
| --- | --- | --- | --- | --- | --- |
| 28 | 3 | **Formal qual (3lot)** | 166d | 2025-08-08 | 2026-01-20 |
| 29 | 3.1 | RE 168H | 1d | 2026-01-20 | 2026-01-20 |
| 30 | 3.2 | RE 504H | 1d | 2025-08-08 | 2025-08-08 |
| 31 | 3.3 | RE 1008H | 1d | 2025-08-08 | 2025-08-08 |
